# Children's book schedule

How a schedule from MS Project changed from version to version. A marks actual dates.

## Version 1 (saved 2010-06-02, file Advanced Tracking A_Start.mpp)

Note of the change: Qlik Microsoft Project Example

| ID | WBS | Task | Duration | Start | Finish | Predecessors | Total float | Constraint |
| --- | --- | --- | --- | --- | --- | --- | --- | --- |
| 1 | 1 | **Editorial staff meeting** | 60.12d | 2012-04-09 08:00 | 2012-07-02 09:00 |  | 98.38d |  |
| 2 |  | Editorial staff meeting 1 | 1h | 2012-04-09 08:00 | 2012-04-09 09:00 |  | 158d | start no earlier than 2012-04-09 08:00 |
| 3 |  | Editorial staff meeting 2 | 1h | 2012-04-16 08:00 | 2012-04-16 09:00 |  | 153d | start no earlier than 2012-04-16 08:00 |
| 4 |  | Editorial staff meeting 3 | 1h | 2012-04-23 08:00 | 2012-04-23 09:00 |  | 148d | start no earlier than 2012-04-23 08:00 |
| 5 |  | Editorial staff meeting 4 | 1h | 2012-04-30 08:00 | 2012-04-30 09:00 |  | 143d | start no earlier than 2012-04-30 08:00 |
| 6 |  | Editorial staff meeting 5 | 1h | 2012-05-07 08:00 | 2012-05-07 09:00 |  | 138d | start no earlier than 2012-05-07 08:00 |
| 7 |  | Editorial staff meeting 6 | 1h | 2012-05-14 08:00 | 2012-05-14 09:00 |  | 133d | start no earlier than 2012-05-14 08:00 |
| 8 |  | Editorial staff meeting 7 | 1h | 2012-05-21 08:00 | 2012-05-21 09:00 |  | 128d | start no earlier than 2012-05-21 08:00 |
| 9 |  | Editorial staff meeting 8 | 1h | 2012-05-28 08:00 | 2012-05-28 09:00 |  | 123d | start no earlier than 2012-05-28 08:00 |
| 10 |  | Editorial staff meeting 9 | 1h | 2012-06-04 08:00 | 2012-06-04 09:00 |  | 118d | start no earlier than 2012-06-04 08:00 |
| 11 |  | Editorial staff meeting 10 | 1h | 2012-06-11 08:00 | 2012-06-11 09:00 |  | 113d | start no earlier than 2012-06-11 08:00 |
| 12 |  | Editorial staff meeting 11 | 1h | 2012-06-18 08:00 | 2012-06-18 09:00 |  | 108d | start no earlier than 2012-06-18 08:00 |
| 13 |  | Editorial staff meeting 12 | 1h | 2012-06-25 08:00 | 2012-06-25 09:00 |  | 103d | start no earlier than 2012-06-25 08:00 |
| 14 |  | Editorial staff meeting 13 | 1h | 2012-07-02 08:00 | 2012-07-02 09:00 |  | 98d | start no earlier than 2012-07-02 08:00 |
| 15 | 2 | **Acquisition** | 35.5d | 2012-04-02 08:00 | 2012-05-21 12:00 |  | 0d |  |
| 16 |  | Manuscript received | 0d | 2012-04-02 08:00 | 2012-04-02 08:00 |  | 0d |  |
| 17 |  | Content edit | 15d | 2012-04-02 08:00 | 2012-04-26 10:00 | 16 | 0d |  |
| 18 |  | Original art review | 10.25d | 2012-04-19 10:00 | 2012-05-03 12:00 | 17FS-5d | 0d |  |
| 19 |  | Author review of content edit | 12d | 2012-05-03 13:00 | 2012-05-21 12:00 | 17, 18 | 0d |  |
| 20 |  | Handoff to Editorial | 0d | 2012-05-21 12:00 | 2012-05-21 12:00 | 19 | 0d |  |
| 21 | 3 | **Editorial** | 28.88d | 2012-05-21 13:00 | 2012-06-29 11:00 | 15 | 0d |  |
| 22 |  | Organize manuscript for copyedit | 5d | 2012-05-21 13:00 | 2012-05-28 12:00 |  | 0d |  |
| 23 |  | Copyedit | 11.25d | 2012-05-28 13:00 | 2012-06-12 15:00 | 22 | 0d |  |
| 24 |  | Author review of copyedit | 10d | 2012-06-12 15:00 | 2012-06-26 15:00 | 23 | 0d |  |
| 25 |  | Copyedit incorp | 5d | 2012-06-22 10:00 | 2012-06-29 11:00 | 24FS-2.5% | 0d |  |
| 26 |  | Handoff to Production | 0d | 2012-06-29 11:00 | 2012-06-29 11:00 | 25 | 0d |  |
| 27 | 4 | **Design and Production** | 55.12d | 2012-06-29 11:00 | 2012-09-17 12:00 | 21 | 0d |  |
| 28 |  | Set pages | 15d | 2012-06-29 11:00 | 2012-07-23 11:00 |  | 0d |  |
| 29 |  | Interior illustration design | 15.12d | 2012-06-29 11:00 | 2012-07-23 12:00 | 28SS | 0d |  |
| 30 | 4.3 | **1st Pages review** | 30d | 2012-07-23 13:00 | 2012-09-03 12:00 | 29 | 0d |  |
| 31 |  | Proofread and index | 10d | 2012-07-23 13:00 | 2012-08-06 12:00 |  | 0d | start no earlier than 2012-07-13 08:00 |
| 32 |  | Incorporate 1st Pages review | 10d | 2012-08-06 13:00 | 2012-08-20 12:00 | 31 | 0d |  |
| 33 |  | Send proofed pages to Production | 0d | 2012-08-20 12:00 | 2012-08-20 12:00 | 32 | 0d |  |
| 34 |  | Enter page corrections and index | 5d | 2012-08-20 13:00 | 2012-08-27 12:00 | 33 | 0d |  |
| 35 |  | Cover design | 5d | 2012-08-27 13:00 | 2012-09-03 12:00 | 34 | 0d |  |
| 36 | 4.4 | **2nd Pages review** | 10d | 2012-09-03 13:00 | 2012-09-17 12:00 |  | 0d |  |
| 37 |  | Proof and review | 5d | 2012-09-03 13:00 | 2012-09-10 12:00 | 35 | 0d |  |
| 38 |  | Send proofed pages to Production | 0d | 2012-09-10 12:00 | 2012-09-10 12:00 | 37 | 0d |  |
| 39 |  | Final review | 5d | 2012-09-10 13:00 | 2012-09-17 12:00 | 38 | 0d |  |
| 40 | 4.5 | **Design book's companion website** | 5d | 2012-09-03 13:00 | 2012-09-10 12:00 | 30 | 5d |  |
| 41 |  | Create mockup | 3d | 2012-09-03 13:00 | 2012-09-06 12:00 |  | 5d |  |
| 42 |  | Review with author | 2d | 2012-09-06 13:00 | 2012-09-10 12:00 | 41 | 5d |  |
| 43 | 5 | **Color prep and printing** | 44d | 2012-09-17 13:00 | 2012-11-16 12:00 | 40 | 0d |  |
| 44 |  | Send to color house | 1d | 2012-09-17 13:00 | 2012-09-18 12:00 | 36 | 0d |  |
| 45 |  | Generate proofs | 10d | 2012-09-18 13:00 | 2012-10-02 12:00 | 44 | 0d |  |
| 46 |  | Print and ship | 30d | 2012-10-05 13:00 | 2012-11-16 12:00 | 45FS+3d | 0d |  |
| 47 | 6 | **Book launch prep** | 22d | 2012-09-18 13:00 | 2012-10-18 12:00 |  | 21d |  |
| 48 |  | Launch planning | 5d | 2012-09-18 13:00 | 2012-09-25 12:00 | 44 | 21d |  |
| 49 |  | Assign launch team members | 1d | 2012-09-25 13:00 | 2012-09-26 12:00 | 48 | 21d |  |
| 50 |  | Complete author questionnaire | 5d | 2012-09-26 13:00 | 2012-10-03 12:00 | 49 | 21d |  |
| 51 |  | Schedule author interviews | 1d | 2012-10-03 13:00 | 2012-10-04 12:00 | 50 | 21d |  |
| 52 |  | Design and order marketing material | 10d | 2012-10-04 13:00 | 2012-10-18 12:00 | 51 | 21d |  |

## Version 2 (saved 2010-06-02, file Advanced Tracking B_Start.mpp)

Note of the change: Qlik Microsoft Project Example

Last finish stays 2012-11-16. Complete tasks 0 → 4.

Changed:

| ID | Task | Start | Finish | Complete | Total float | Other |
| --- | --- | --- | --- | --- | --- | --- |
| 1 | **Editorial staff meeting** | 2012-04-09 08:00 A |  | 0% → 15% |  |  |
| 2 | Editorial staff meeting 1 | 2012-04-09 08:00 A | 2012-04-09 09:00 A | 0% → 100% | 158d → none |  |
| 3 | Editorial staff meeting 2 | 2012-04-16 08:00 A | 2012-04-16 09:00 A | 0% → 100% | 153d → none |  |
| 15 | **Acquisition** | 2012-04-02 08:00 A |  | 0% → 40% |  | baseline finish 2012-05-11 17:00 → 2012-05-21 12:00 |
| 16 | Manuscript received | 2012-04-02 08:00 A | 2012-04-02 08:00 A | 0% → 100% | 0d → none |  |
| 17 | Content edit | 2012-04-02 08:00 A | 2012-04-26 10:00 A | 0% → 100% | 0d → none | baseline finish 2012-04-25 17:00 → 2012-04-26 10:00 |
| 18 | Original art review |  |  |  |  | baseline start none → 2012-04-19 10:00; baseline finish none → 2012-05-03 12:00 |
| 19 | Author review of content edit |  |  |  |  | baseline start 2012-04-26 08:00 → 2012-05-03 13:00; baseline finish 2012-05-11 17:00 → 2012-05-21 12:00 |
| 20 | Handoff to Editorial |  |  |  |  | baseline start 2012-05-11 17:00 → 2012-05-21 12:00; baseline finish 2012-05-11 17:00 → 2012-05-21 12:00 |
| 21 | **Editorial** |  |  |  |  | baseline start 2012-05-14 08:00 → 2012-05-21 13:00; baseline finish 2012-06-21 15:00 → 2012-06-29 11:00 |
| 22 | Organize manuscript for copyedit |  |  |  |  | baseline start 2012-05-14 08:00 → 2012-05-21 13:00; baseline finish 2012-05-18 17:00 → 2012-05-28 12:00 |
| 23 | Copyedit |  |  |  |  | baseline start 2012-05-21 08:00 → 2012-05-28 13:00; baseline finish 2012-06-05 10:00 → 2012-06-12 15:00 |
| 24 | Author review of copyedit |  |  |  |  | baseline start 2012-06-05 10:00 → 2012-06-12 15:00; baseline finish 2012-06-19 10:00 → 2012-06-26 15:00 |
| 25 | Copyedit incorp |  |  |  |  | baseline start 2012-06-14 15:00 → 2012-06-22 10:00; baseline finish 2012-06-21 15:00 → 2012-06-29 11:00 |
| 26 | Handoff to Production |  |  |  |  | baseline start 2012-06-21 15:00 → 2012-06-29 11:00; baseline finish 2012-06-21 15:00 → 2012-06-29 11:00 |
| 27 | **Design and Production** |  |  |  |  | baseline start 2012-06-21 15:00 → 2012-06-29 11:00; baseline finish 2012-08-31 15:00 → 2012-09-17 12:00 |
| 28 | Set pages |  |  |  |  | baseline start 2012-06-21 15:00 → 2012-06-29 11:00; baseline finish 2012-07-13 15:00 → 2012-07-23 11:00 |
| 29 | Interior illustration design |  |  |  |  | baseline start 2012-06-21 15:00 → 2012-06-29 11:00; baseline finish 2012-07-13 15:00 → 2012-07-23 12:00 |
| 30 | **1st Pages review** |  |  |  |  | baseline start 2012-07-13 15:00 → 2012-07-23 13:00; baseline finish 2012-08-17 15:00 → 2012-09-03 12:00 |
| 31 | Proofread and index |  |  |  |  | baseline start 2012-07-13 15:00 → 2012-07-23 13:00; baseline finish 2012-07-27 15:00 → 2012-08-06 12:00 |
| 32 | Incorporate 1st Pages review |  |  |  |  | baseline start 2012-07-27 15:00 → 2012-08-06 13:00; baseline finish 2012-08-03 15:00 → 2012-08-20 12:00 |
| 33 | Send proofed pages to Production |  |  |  |  | baseline start 2012-08-03 15:00 → 2012-08-20 12:00; baseline finish 2012-08-03 15:00 → 2012-08-20 12:00 |
| 34 | Enter page corrections and index |  |  |  |  | baseline start 2012-08-03 15:00 → 2012-08-20 13:00; baseline finish 2012-08-10 15:00 → 2012-08-27 12:00 |
| 35 | Cover design |  |  |  |  | baseline start 2012-08-10 15:00 → 2012-08-27 13:00; baseline finish 2012-08-17 15:00 → 2012-09-03 12:00 |
| 36 | **2nd Pages review** |  |  |  |  | baseline start 2012-08-17 15:00 → 2012-09-03 13:00; baseline finish 2012-08-31 15:00 → 2012-09-17 12:00 |
| 37 | Proof and review |  |  |  |  | baseline start 2012-08-17 15:00 → 2012-09-03 13:00; baseline finish 2012-08-24 15:00 → 2012-09-10 12:00 |
| 38 | Send proofed pages to Production |  |  |  |  | baseline start 2012-08-24 15:00 → 2012-09-10 12:00; baseline finish 2012-08-24 15:00 → 2012-09-10 12:00 |
| 39 | Final review |  |  |  |  | baseline start 2012-08-24 15:00 → 2012-09-10 13:00; baseline finish 2012-08-31 15:00 → 2012-09-17 12:00 |
| 40 | **Design book's companion website** |  |  |  |  | baseline start 2012-08-17 15:00 → 2012-09-03 13:00; baseline finish 2012-08-24 15:00 → 2012-09-10 12:00 |
| 41 | Create mockup |  |  |  |  | baseline start 2012-08-17 15:00 → 2012-09-03 13:00; baseline finish 2012-08-22 15:00 → 2012-09-06 12:00 |
| 42 | Review with author |  |  |  |  | baseline start 2012-08-22 15:00 → 2012-09-06 13:00; baseline finish 2012-08-24 15:00 → 2012-09-10 12:00 |
| 43 | **Color prep and printing** |  |  |  |  | baseline start 2012-09-03 08:00 → 2012-09-17 13:00; baseline finish 2012-11-01 17:00 → 2012-11-16 12:00 |
| 44 | Send to color house |  |  |  |  | baseline start 2012-09-03 08:00 → 2012-09-17 13:00; baseline finish 2012-09-03 17:00 → 2012-09-18 12:00 |
| 45 | Generate proofs |  |  |  |  | baseline start 2012-09-04 08:00 → 2012-09-18 13:00; baseline finish 2012-09-17 17:00 → 2012-10-02 12:00 |
| 46 | Print and ship |  |  |  |  | baseline start 2012-09-21 08:00 → 2012-10-05 13:00; baseline finish 2012-11-01 17:00 → 2012-11-16 12:00 |
| 47 | **Book launch prep** |  |  |  |  | baseline start 2012-09-04 08:00 → 2012-09-18 13:00; baseline finish 2012-09-26 17:00 → 2012-10-18 12:00 |
| 48 | Launch planning |  |  |  |  | baseline start 2012-09-04 08:00 → 2012-09-18 13:00; baseline finish 2012-09-10 17:00 → 2012-09-25 12:00 |
| 49 | Assign launch team members |  |  |  |  | baseline start 2012-09-11 08:00 → 2012-09-25 13:00; baseline finish 2012-09-11 17:00 → 2012-09-26 12:00 |
| 50 | Complete author questionnaire |  |  |  |  | baseline start 2012-09-12 08:00 → 2012-09-26 13:00; baseline finish 2012-09-18 17:00 → 2012-10-03 12:00 |
| 51 | Schedule author interviews |  |  |  |  | baseline start 2012-09-19 08:00 → 2012-10-03 13:00; baseline finish 2012-09-19 17:00 → 2012-10-04 12:00 |
| 52 | Design and order marketing material |  |  |  |  | baseline start 2012-09-20 08:00 → 2012-10-04 13:00; baseline finish 2012-09-26 17:00 → 2012-10-18 12:00 |

## Version 3 (saved 2010-06-02, file Advanced Tracking C_Start.mpp)

Note of the change: Qlik Microsoft Project Example

Last finish 2012-11-16 → 2012-11-19 (+3d). Complete tasks 4 → 12.

Changed:

| ID | Task | Start | Finish | Duration | Complete | Total float |
| --- | --- | --- | --- | --- | --- | --- |
| 1 | **Editorial staff meeting** |  |  |  | 15% → 54% |  |
| 4 | Editorial staff meeting 3 | 2012-04-23 08:00 A | 2012-04-23 09:00 A |  | 0% → 100% | 148d → none |
| 5 | Editorial staff meeting 4 | 2012-04-30 08:00 A | 2012-04-30 09:00 A |  | 0% → 100% | 143d → none |
| 6 | Editorial staff meeting 5 | 2012-05-07 08:00 A | 2012-05-07 09:00 A |  | 0% → 100% | 138d → none |
| 7 | Editorial staff meeting 6 | 2012-05-14 08:00 A | 2012-05-14 09:00 A |  | 0% → 100% | 133d → none |
| 8 | Editorial staff meeting 7 | 2012-05-21 08:00 A | 2012-05-21 09:00 A |  | 0% → 100% | 128d → none |
| 15 | **Acquisition** |  | 2012-05-21 12:00 → 2012-05-22 17:00 A (+1d) | 35.5d → 37d | 40% → 100% | 0d → none |
| 18 | Original art review | 2012-04-19 10:00 A | 2012-05-03 12:00 A |  | 0% → 100% | 0d → none |
| 19 | Author review of content edit | 2012-05-03 13:00 A | 2012-05-21 12:00 → 2012-05-22 17:00 A (+1d) | 12d → 13d | 0% → 100% | 0d → none |
| 20 | Handoff to Editorial | 2012-05-21 12:00 → 2012-05-22 17:00 A (+1d) | 2012-05-21 12:00 → 2012-05-22 17:00 A (+1d) |  | 0% → 100% | 0d → none |
| 21 | **Editorial** | 2012-05-21 13:00 → 2012-05-23 08:00 (+2d) | 2012-06-29 11:00 → 2012-07-02 16:00 (+3d) |  |  |  |
| 22 | Organize manuscript for copyedit | 2012-05-21 13:00 → 2012-05-23 08:00 (+2d) | 2012-05-28 12:00 → 2012-05-29 17:00 (+1d) |  |  |  |
| 23 | Copyedit | 2012-05-28 13:00 → 2012-05-30 08:00 (+2d) | 2012-06-12 15:00 → 2012-06-14 10:00 (+2d) |  |  |  |
| 24 | Author review of copyedit | 2012-06-12 15:00 → 2012-06-14 10:00 (+2d) | 2012-06-26 15:00 → 2012-06-28 10:00 (+2d) |  |  |  |
| 25 | Copyedit incorp | 2012-06-22 10:00 → 2012-06-25 15:00 (+3d) | 2012-06-29 11:00 → 2012-07-02 16:00 (+3d) |  |  |  |
| 26 | Handoff to Production | 2012-06-29 11:00 → 2012-07-02 16:00 (+3d) | 2012-06-29 11:00 → 2012-07-02 16:00 (+3d) |  |  |  |
| 27 | **Design and Production** | 2012-06-29 11:00 → 2012-07-02 16:00 (+3d) | 2012-09-17 12:00 → 2012-09-18 17:00 (+1d) |  |  |  |
| 28 | Set pages | 2012-06-29 11:00 → 2012-07-02 16:00 (+3d) | 2012-07-23 11:00 → 2012-07-24 16:00 (+1d) |  |  |  |
| 29 | Interior illustration design | 2012-06-29 11:00 → 2012-07-02 16:00 (+3d) | 2012-07-23 12:00 → 2012-07-24 17:00 (+1d) |  |  |  |
| 30 | **1st Pages review** | 2012-07-23 13:00 → 2012-07-25 08:00 (+2d) | 2012-09-03 12:00 → 2012-09-04 17:00 (+1d) |  |  |  |
| 31 | Proofread and index | 2012-07-23 13:00 → 2012-07-25 08:00 (+2d) | 2012-08-06 12:00 → 2012-08-07 17:00 (+1d) |  |  |  |
| 32 | Incorporate 1st Pages review | 2012-08-06 13:00 → 2012-08-08 08:00 (+2d) | 2012-08-20 12:00 → 2012-08-21 17:00 (+1d) |  |  |  |
| 33 | Send proofed pages to Production | 2012-08-20 12:00 → 2012-08-21 17:00 (+1d) | 2012-08-20 12:00 → 2012-08-21 17:00 (+1d) |  |  |  |
| 34 | Enter page corrections and index | 2012-08-20 13:00 → 2012-08-22 08:00 (+2d) | 2012-08-27 12:00 → 2012-08-28 17:00 (+1d) |  |  |  |
| 35 | Cover design | 2012-08-27 13:00 → 2012-08-29 08:00 (+2d) | 2012-09-03 12:00 → 2012-09-04 17:00 (+1d) |  |  |  |
| 36 | **2nd Pages review** | 2012-09-03 13:00 → 2012-09-05 08:00 (+2d) | 2012-09-17 12:00 → 2012-09-18 17:00 (+1d) |  |  |  |
| 37 | Proof and review | 2012-09-03 13:00 → 2012-09-05 08:00 (+2d) | 2012-09-10 12:00 → 2012-09-11 17:00 (+1d) |  |  |  |
| 38 | Send proofed pages to Production | 2012-09-10 12:00 → 2012-09-11 17:00 (+1d) | 2012-09-10 12:00 → 2012-09-11 17:00 (+1d) |  |  |  |
| 39 | Final review | 2012-09-10 13:00 → 2012-09-12 08:00 (+2d) | 2012-09-17 12:00 → 2012-09-18 17:00 (+1d) |  |  |  |
| 40 | **Design book's companion website** | 2012-09-03 13:00 → 2012-09-05 08:00 (+2d) | 2012-09-10 12:00 → 2012-09-11 17:00 (+1d) |  |  |  |
| 41 | Create mockup | 2012-09-03 13:00 → 2012-09-05 08:00 (+2d) | 2012-09-06 12:00 → 2012-09-07 17:00 (+1d) |  |  |  |
| 42 | Review with author | 2012-09-06 13:00 → 2012-09-10 08:00 (+4d) | 2012-09-10 12:00 → 2012-09-11 17:00 (+1d) |  |  |  |
| 43 | **Color prep and printing** | 2012-09-17 13:00 → 2012-09-19 08:00 (+2d) | 2012-11-16 12:00 → 2012-11-19 17:00 (+3d) |  |  |  |
| 44 | Send to color house | 2012-09-17 13:00 → 2012-09-19 08:00 (+2d) | 2012-09-18 12:00 → 2012-09-19 17:00 (+1d) |  |  |  |
| 45 | Generate proofs | 2012-09-18 13:00 → 2012-09-20 08:00 (+2d) | 2012-10-02 12:00 → 2012-10-03 17:00 (+1d) |  |  |  |
| 46 | Print and ship | 2012-10-05 13:00 → 2012-10-09 08:00 (+4d) | 2012-11-16 12:00 → 2012-11-19 17:00 (+3d) |  |  |  |
| 47 | **Book launch prep** | 2012-09-18 13:00 → 2012-09-20 08:00 (+2d) | 2012-10-18 12:00 → 2012-10-19 17:00 (+1d) |  |  |  |
| 48 | Launch planning | 2012-09-18 13:00 → 2012-09-20 08:00 (+2d) | 2012-09-25 12:00 → 2012-09-26 17:00 (+1d) |  |  |  |
| 49 | Assign launch team members | 2012-09-25 13:00 → 2012-09-27 08:00 (+2d) | 2012-09-26 12:00 → 2012-09-27 17:00 (+1d) |  |  |  |
| 50 | Complete author questionnaire | 2012-09-26 13:00 → 2012-09-28 08:00 (+2d) | 2012-10-03 12:00 → 2012-10-04 17:00 (+1d) |  |  |  |
| 51 | Schedule author interviews | 2012-10-03 13:00 → 2012-10-05 08:00 (+2d) | 2012-10-04 12:00 → 2012-10-05 17:00 (+1d) |  |  |  |
| 52 | Design and order marketing material | 2012-10-04 13:00 → 2012-10-08 08:00 (+4d) | 2012-10-18 12:00 → 2012-10-19 17:00 (+1d) |  |  |  |

## Version 4 (saved 2010-06-02, file Advanced Tracking D_Start.mpp)

Note of the change: Qlik Microsoft Project Example

Last finish 2012-11-19 → 2012-11-22 (+3d). Complete tasks 12 → 19.

Changed:

| ID | Task | Start | Finish | Duration | Complete | Total float |
| --- | --- | --- | --- | --- | --- | --- |
| 21 | **Editorial** | 2012-05-23 08:00 A | 2012-07-02 16:00 → 2012-07-03 17:00 A (+1d) | 28.88d → 30d | 0% → 100% | 0d → none |
| 22 | Organize manuscript for copyedit | 2012-05-23 08:00 A | 2012-05-29 17:00 A |  | 0% → 100% | 0d → none |
| 23 | Copyedit | 2012-05-30 08:00 A | 2012-06-14 10:00 → 2012-06-13 12:00 A (-1d) | 11.25d → 10.5d | 0% → 100% | 0d → none |
| 24 | Author review of copyedit | 2012-06-14 10:00 → 2012-06-13 13:00 A (-1d) | 2012-06-28 10:00 → 2012-06-29 17:00 A (+1d) | 10d → 12.5d | 0% → 100% | 0d → none |
| 25 | Copyedit incorp | 2012-06-25 15:00 → 2012-06-26 16:00 A (+1d) | 2012-07-02 16:00 → 2012-07-03 17:00 A (+1d) | 5d → 5.12d | 0% → 100% | 0d → none |
| 26 | Handoff to Production | 2012-07-02 16:00 → 2012-07-03 17:00 A (+1d) | 2012-07-02 16:00 → 2012-07-03 17:00 A (+1d) |  | 0% → 100% | 0d → none |
| 27 | **Design and Production** | 2012-07-02 16:00 → 2012-07-05 08:00 A (+3d) | 2012-09-18 17:00 → 2012-09-20 11:12 (+2d) | 55.12d → 55.4d | 0% → 42% | 0d → -1.4d |
| 28 | Set pages | 2012-07-02 16:00 → 2012-07-05 08:00 A (+3d) | 2012-07-24 16:00 → 2012-07-25 15:12 A (+1d) | 15d → 14.78d | 0% → 100% | 0d → none |
| 29 | Interior illustration design | 2012-07-02 16:00 → 2012-07-05 08:00 A (+3d) | 2012-07-24 17:00 → 2012-07-25 17:00 A (+1d) | 15.12d → 15d | 0% → 100% | 0d → none |
| 30 | **1st Pages review** | 2012-07-25 08:00 → 2012-07-26 08:00 A (+1d) | 2012-09-04 17:00 → 2012-09-06 11:12 (+2d) | 30d → 30.4d | 0% → 7% | 0d → -1.4d |
| 31 | Proofread and index | 2012-07-25 08:00 → 2012-07-26 08:00 A (+1d) | 2012-08-07 17:00 → 2012-08-09 11:12 (+2d) | 10d → 10.4d | 0% → 19% | 0d → -1.4d |
| 32 | Incorporate 1st Pages review | 2012-08-08 08:00 → 2012-08-09 11:12 (+1d) | 2012-08-21 17:00 → 2012-08-23 11:12 (+2d) |  |  | 0d → -1.4d |
| 33 | Send proofed pages to Production | 2012-08-21 17:00 → 2012-08-23 11:12 (+2d) | 2012-08-21 17:00 → 2012-08-23 11:12 (+2d) |  |  | 0d → -1.4d |
| 34 | Enter page corrections and index | 2012-08-22 08:00 → 2012-08-23 11:12 (+1d) | 2012-08-28 17:00 → 2012-08-30 11:12 (+2d) |  |  | 0d → -1.4d |
| 35 | Cover design | 2012-08-29 08:00 → 2012-08-30 11:12 (+1d) | 2012-09-04 17:00 → 2012-09-06 11:12 (+2d) |  |  | 0d → -1.4d |
| 36 | **2nd Pages review** | 2012-09-05 08:00 → 2012-09-06 11:12 (+1d) | 2012-09-18 17:00 → 2012-09-20 11:12 (+2d) |  |  | 0d → -1.4d |
| 37 | Proof and review | 2012-09-05 08:00 → 2012-09-06 11:12 (+1d) | 2012-09-11 17:00 → 2012-09-13 11:12 (+2d) |  |  | 0d → -1.4d |
| 38 | Send proofed pages to Production | 2012-09-11 17:00 → 2012-09-13 11:12 (+2d) | 2012-09-11 17:00 → 2012-09-13 11:12 (+2d) |  |  | 0d → -1.4d |
| 39 | Final review | 2012-09-12 08:00 → 2012-09-13 11:12 (+1d) | 2012-09-18 17:00 → 2012-09-20 11:12 (+2d) |  |  | 0d → -1.4d |
| 40 | **Design book's companion website** | 2012-09-05 08:00 → 2012-09-06 11:12 (+1d) | 2012-09-11 17:00 → 2012-09-13 11:12 (+2d) |  |  | 5d → 3.6d |
| 41 | Create mockup | 2012-09-05 08:00 → 2012-09-06 11:12 (+1d) | 2012-09-07 17:00 → 2012-09-11 11:12 (+4d) |  |  | 5d → 3.6d |
| 42 | Review with author | 2012-09-10 08:00 → 2012-09-11 11:12 (+1d) | 2012-09-11 17:00 → 2012-09-13 11:12 (+2d) |  |  | 5d → 3.6d |
| 43 | **Color prep and printing** | 2012-09-19 08:00 → 2012-09-24 08:00 (+5d) | 2012-11-19 17:00 → 2012-11-22 17:00 (+3d) |  |  | 0d → -3d |
| 44 | Send to color house | 2012-09-19 08:00 → 2012-09-24 08:00 (+5d) | 2012-09-19 17:00 → 2012-09-24 17:00 (+5d) |  |  | 0d → -1d |
| 45 | Generate proofs | 2012-09-20 08:00 → 2012-09-25 08:00 (+5d) | 2012-10-03 17:00 → 2012-10-08 17:00 (+5d) |  |  | 0d → -1d |
| 46 | Print and ship | 2012-10-09 08:00 → 2012-10-12 08:00 (+3d) | 2012-11-19 17:00 → 2012-11-22 17:00 (+3d) |  |  |  |
| 47 | **Book launch prep** | 2012-09-20 08:00 → 2012-09-25 08:00 (+5d) | 2012-10-19 17:00 → 2012-10-24 17:00 (+5d) |  |  |  |
| 48 | Launch planning | 2012-09-20 08:00 → 2012-09-25 08:00 (+5d) | 2012-09-26 17:00 → 2012-10-01 17:00 (+5d) |  |  |  |
| 49 | Assign launch team members | 2012-09-27 08:00 → 2012-10-02 08:00 (+5d) | 2012-09-27 17:00 → 2012-10-02 17:00 (+5d) |  |  |  |
| 50 | Complete author questionnaire | 2012-09-28 08:00 → 2012-10-03 08:00 (+5d) | 2012-10-04 17:00 → 2012-10-09 17:00 (+5d) |  |  |  |
| 51 | Schedule author interviews | 2012-10-05 08:00 → 2012-10-10 08:00 (+5d) | 2012-10-05 17:00 → 2012-10-10 17:00 (+5d) |  |  |  |
| 52 | Design and order marketing material | 2012-10-08 08:00 → 2012-10-11 08:00 (+3d) | 2012-10-19 17:00 → 2012-10-24 17:00 (+5d) |  |  |  |
